# PMGT5820_P3_Group11_Baseline

Schedule from MS Project, 2027-04-01 to 2029-04-30, status date 2028-06-30, costs in $, A marks actual dates.

## Calendars

- P3 Standard Calendar: Mon-Fri 08:00-12:00, 13:00-17:00; Sat-Sun off. Exceptions (off unless hours are given): 2027-06-14 (King's Birthday), 2027-10-04 (Labour Day), 2027-12-27 to 2027-12-28 (Christmas (substitute)), 2028-01-03 (New Year (substitute)), 2028-01-26 (Australia Day), 2028-04-14 (Good Friday), 2028-04-17 (Easter Monday), 2028-04-25 (Anzac Day), 2028-06-12 (King's Birthday), 2028-10-02 (Labour Day), 2028-12-25 (Christmas Day), 2028-12-26 (Boxing Day), 2029-01-01 (New Year's Day), 2029-01-26 (Australia Day), 2029-01-27 to 2029-01-29 00:00-12:00, 12:01-23:59 (Enterprise cutover weekend), 2029-03-30 (Good Friday), 2029-04-02 (Easter Monday), 2029-04-25 (Anzac Day).
- P3 Cutover 24-7: Mon-Fri 08:00-12:00, 13:00-17:00; Sat-Sun 00:00-24:00.

## Resources

| Resource | Rate |
| --- | --- |
| Project Manager | 155 |
| Core Banking Product Owner | 160 |
| Core Banking Solution Architect | 185 |
| Deposit Product SME | 145 |
| Senior Business Analyst | 130 |
| Core Configuration Specialist | 165 |
| Data Migration Lead | 155 |
| Finance Reconciliation Lead | 155 |
| Integration Lead | 155 |
| Test Manager | 145 |
| Test Analyst | 110 |
| Legal & Customer Treatment Lead | 175 |
| Operational Readiness Lead | 135 |
| Core Platform Licence and Vendor Services |  |
| Core Configuration and Implementation Partner |  |
| Migration Development and Tooling |  |
| Integration and Finance Reconciliation Build |  |
| Testing Environments and Assurance |  |
| Customer Communications and Remediation Provision |  |
| Legacy Archive and Decommissioning |  |
| Project Contingency Allowance |  |

## Schedule

| ID | WBS | Task | Type | Duration | Start | Finish | Predecessors | Complete | Remaining | Baseline start | Baseline finish | Baseline duration | Baseline 1 start | Baseline 1 finish | Total slack | Free slack | Constraint | Deadline | Resources | Work | Actual work | Cost | Baseline cost | Actual cost |
| --- | --- | --- | --- | --- | --- | --- | --- | --- | --- | --- | --- | --- | --- | --- | --- | --- | --- | --- | --- | --- | --- | --- | --- | --- |
| 1 | 1 | **Mobilisation, Product Discovery & Governance** |  | 64d | 2027-04-01 A | 2027-06-30 |  | 99% | 0d | 2027-04-01 | 2027-06-30 | 64d | 2027-04-01 | 2027-06-30 | 468.5d |  |  |  |  | 1957.84h | 1957.84h | 294,283.6 | 294,283.6 | 294,283.6 |
| 2 | 1.1 | **Establish Project Governance & Financial Control** |  | 15d | 2027-04-01 A | 2027-04-21 |  | 99% | 0d | 2027-04-01 | 2027-04-21 | 15d | 2027-04-01 | 2027-04-21 | 517.5d |  |  |  |  | 194.4h | 194.4h | 28,758 | 28,758 | 28,758 |
| 3 | 1.1.1 | Confirm Sponsor, Product Owner and Finance accountabilities |  | 5d | 2027-04-01 A | 2027-04-07 |  | 99% | 0d | 2027-04-01 | 2027-04-07 | 5d | 2027-04-01 | 2027-04-07 | 5d | 0d |  |  | Project Manager [12%]; Core Banking Product Owner [12%]; Senior Business Analyst [35%]; Deposit Product SME [35%]; Core Banking Solution Architect [12%]; Operational Readiness Lead [12%]; Legal & Customer Treatment Lead [12%]; Data Migration Lead [12%]; Finance Reconciliation Lead [12%]; Integration Lead [12%]; Test Manager [12%]; Test Analyst [50%]; Core Configuration Specialist [50%] | 106.4h | 106.4h | 15,422 | 15,422 | 15,422 |
| 4 | 1.1.2 | Establish product decision and customer-treatment forum |  | 5d | 2027-04-07 A | 2027-04-14 | 3 | 99% | 0d | 2027-04-07 | 2027-04-14 | 5d | 2027-04-07 | 2027-04-14 | 5d | 0d |  |  | Project Manager [12%]; Core Banking Product Owner [12%]; Senior Business Analyst [12%]; Deposit Product SME [50%]; Core Banking Solution Architect [12%]; Operational Readiness Lead [12%]; Legal & Customer Treatment Lead [12%] | 44h | 44h | 6,668 | 6,668 | 6,668 |
| 5 | 1.1.3 | Approve baseline, tolerances and assurance plan |  | 5d | 2027-04-14 A | 2027-04-21 | 4 | 99% | 0d | 2027-04-14 | 2027-04-21 | 5d | 2027-04-14 | 2027-04-21 | 517.5d |  |  |  | Project Manager [12%]; Core Banking Product Owner [12%]; Senior Business Analyst [12%]; Deposit Product SME [50%]; Core Banking Solution Architect [12%]; Operational Readiness Lead [12%]; Legal & Customer Treatment Lead [12%] | 44h | 44h | 6,668 | 6,668 | 6,668 |
| 6 | 1.2 | **Product & Legacy Discovery** |  | 30d | 2027-04-07 A | 2027-05-19 |  | 99% | 0d | 2027-04-07 | 2027-05-19 | 30d | 2027-04-07 | 2027-05-19 | 497.5d |  |  |  |  | 1165.44h | 1165.44h | 174,939.6 | 174,939.6 | 174,939.6 |
| 7 | 1.2.1 | Catalogue products, variants and account cohorts |  | 10d | 2027-04-07 A | 2027-04-21 | 3 | 99% | 0d | 2027-04-07 | 2027-04-21 | 10d | 2027-04-07 | 2027-04-21 | 8d | 0d |  |  | Core Banking Product Owner [50%]; Deposit Product SME [200%]; Senior Business Analyst [200%]; Project Manager; Core Banking Solution Architect [50%]; Operational Readiness Lead [50%]; Legal & Customer Treatment Lead [25%] | 370h | 370h | 54,100 | 54,100 | 54,100 |
| 8 | 1.2.2 | Document interest and fee rules |  | 15d | 2027-04-21 A | 2027-05-12 | 7 | 99% | 0d | 2027-04-21 | 2027-05-12 | 15d | 2027-04-21 | 2027-05-12 | 5d | 0d |  |  | Deposit Product SME [200%]; Senior Business Analyst [200%]; Core Banking Product Owner [50%]; Project Manager; Core Banking Solution Architect [50%]; Operational Readiness Lead [50%]; Legal & Customer Treatment Lead [25%] | 300h | 300h | 45,750 | 45,750 | 45,750 |
| 9 | 1.2.3 | Document limits and customer entitlements |  | 10d | 2027-04-21 A | 2027-05-05 | 7 | 99% | 0d | 2027-04-21 | 2027-05-05 | 10d | 2027-04-21 | 2027-05-05 | 10d | 5d |  |  | Deposit Product SME [200%]; Senior Business Analyst [200%]; Legal & Customer Treatment Lead [25%]; Project Manager; Core Banking Solution Architect [50%]; Core Banking Product Owner [50%]; Operational Readiness Lead [50%] | 240h | 240h | 36,600 | 36,600 | 36,600 |
| 10 | 1.2.4 | Identify manual workarounds |  | 8d | 2027-04-21 A | 2027-05-03 | 7 | 99% | 0d | 2027-04-21 | 2027-05-03 | 8d | 2027-04-21 | 2027-05-03 | 12d | 7d |  |  | Deposit Product SME [50%]; Senior Business Analyst [12%]; Project Manager [12%]; Core Banking Solution Architect [12%]; Core Banking Product Owner [12%]; Operational Readiness Lead [12%]; Legal & Customer Treatment Lead [12%] | 68.72h | 68.72h | 10,374.8 | 10,374.8 | 10,374.8 |
| 11 | 1.2.5 | Identify undocumented legacy dependencies |  | 8d | 2027-04-21 A | 2027-05-03 | 7 | 99% | 0d | 2027-04-21 | 2027-05-03 | 8d | 2027-04-21 | 2027-05-03 | 12d | 7d |  |  | Deposit Product SME [50%]; Senior Business Analyst [12%]; Project Manager [12%]; Core Banking Solution Architect [12%]; Core Banking Product Owner [12%]; Operational Readiness Lead [12%]; Legal & Customer Treatment Lead [12%] | 66.72h | 66.72h | 10,024.8 | 10,024.8 | 10,024.8 |
| 12 | 1.2.6 | Validate discovery findings with SMEs |  | 5d | 2027-05-12 A | 2027-05-19 | 8, 9, 10, 11 | 99% | 0d | 2027-05-12 | 2027-05-19 | 5d | 2027-05-12 | 2027-05-19 | 497.5d |  |  |  | Core Banking Product Owner [50%]; Deposit Product SME [200%]; Senior Business Analyst [200%]; Legal & Customer Treatment Lead [25%]; Project Manager; Core Banking Solution Architect [50%]; Operational Readiness Lead [50%] | 120h | 120h | 18,090 | 18,090 | 18,090 |
| 13 | 1.3 | **Interface & Dependency Planning** |  | 25d | 2027-04-21 A | 2027-05-26 |  | 99% | 0d | 2027-04-21 | 2027-05-26 | 25d | 2027-04-21 | 2027-05-26 | 492.5d |  |  |  |  | 598h | 598h | 90,586 | 90,586 | 90,586 |
| 14 | 1.3.1 | Agree customer, payment, channel and compliance interfaces |  | 15d | 2027-04-21 A | 2027-05-12 | 7 | 99% | 0d | 2027-04-21 | 2027-05-12 | 15d | 2027-04-21 | 2027-05-12 | 5d | 0d |  |  | Project Manager; Senior Business Analyst [200%]; Deposit Product SME [200%]; Core Banking Solution Architect [50%]; Core Banking Product Owner [50%]; Operational Readiness Lead [50%]; Legal & Customer Treatment Lead [25%] | 470h | 470h | 71,450 | 71,450 | 71,450 |
| 15 | 1.3.2 | Establish migration responsibilities |  | 5d | 2027-05-12 A | 2027-05-19 | 14 | 99% | 0d | 2027-05-12 | 2027-05-19 | 5d | 2027-05-12 | 2027-05-19 | 5d | 0d |  |  | Project Manager [12%]; Senior Business Analyst [12%]; Deposit Product SME [50%]; Core Banking Solution Architect [12%]; Core Banking Product Owner [12%]; Operational Readiness Lead [12%]; Legal & Customer Treatment Lead [12%] | 44h | 44h | 6,668 | 6,668 | 6,668 |
| 16 | 1.3.3 | Establish reconciliation responsibilities |  | 5d | 2027-05-12 A | 2027-05-19 | 14 | 99% | 0d | 2027-05-12 | 2027-05-19 | 5d | 2027-05-12 | 2027-05-19 | 5d | 0d |  |  | Project Manager [12%]; Senior Business Analyst [12%]; Deposit Product SME [50%]; Core Banking Solution Architect [12%]; Core Banking Product Owner [12%]; Operational Readiness Lead [12%]; Legal & Customer Treatment Lead [12%] | 44h | 44h | 6,668 | 6,668 | 6,668 |
| 17 | 1.3.4 | Confirm legacy-exit and operational-readiness obligations |  | 5d | 2027-05-19 A | 2027-05-26 | 15, 16 | 99% | 0d | 2027-05-19 | 2027-05-26 | 5d | 2027-05-19 | 2027-05-26 | 492.5d |  |  |  | Project Manager [20%]; Operational Readiness Lead [50%]; Data Migration Lead [25%]; Finance Reconciliation Lead [25%] | 40h | 40h | 5,800 | 5,800 | 5,800 |
| 18 | 1.4 | M1 – Product inventory, rationalisation principles and requirements approved | milestone | 0d | 2027-06-30 A | 2027-06-30 A | 5, 12, 17 | 100% |  | 2027-06-30 | 2027-06-30 | 0d | 2027-06-30 | 2027-06-30 |  |  | finish no earlier than 2027-06-30 | 2027-06-30 |  |  |  |  |  |  |
| 19 | 2 | **Product Rationalisation & Solution Design** |  | 129d | 2027-06-30 A | 2027-12-31 |  | 99% | 0d | 2027-06-30 | 2027-12-31 | 129d | 2027-06-30 | 2027-12-31 | 339.5d |  |  |  |  | 7459.92h | 7459.92h | 11,174,196 | 11,174,196 | 11,174,196 |
| 20 | 2.1 | **Product Target-State Decisions** |  | 30d | 2027-06-30 A | 2027-08-11 |  | 99% | 0d | 2027-06-30 | 2027-08-11 | 30d | 2027-06-30 | 2027-08-11 | 438.5d |  |  |  |  | 1689.28h | 1689.28h | 262,988 | 262,988 | 262,988 |
| 21 | 2.1.1 | Define retain, merge, transform and retire treatments |  | 10d | 2027-06-30 A | 2027-07-14 | 18 | 99% | 0d | 2027-06-30 | 2027-07-14 | 10d | 2027-06-30 | 2027-07-14 | 6d | 0d |  |  | Core Banking Product Owner [50%]; Deposit Product SME [200%]; Legal & Customer Treatment Lead [75%]; Senior Business Analyst [200%]; Core Configuration Specialist [200%]; Core Banking Solution Architect; Data Migration Lead; Finance Reconciliation Lead; Project Manager | 620h | 620h | 98,500 | 98,500 | 98,500 |
| 22 | 2.1.2 | Complete customer impact assessment |  | 10d | 2027-07-14 A | 2027-07-28 | 21 | 99% | 0d | 2027-07-14 | 2027-07-28 | 10d | 2027-07-14 | 2027-07-28 | 5d | 0d |  |  | Core Banking Product Owner [12%]; Legal & Customer Treatment Lead [12%]; Senior Business Analyst [50%]; Deposit Product SME [50%]; Core Configuration Specialist [66%]; Core Banking Solution Architect [12%]; Data Migration Lead [12%]; Finance Reconciliation Lead [12%]; Project Manager [12%] | 180.8h | 180.8h | 27,680 | 27,680 | 27,680 |
| 23 | 2.1.3 | Complete legal and benefit impact assessment |  | 6d | 2027-07-14 A | 2027-07-22 | 21 | 99% | 0d | 2027-07-14 | 2027-07-22 | 6d | 2027-07-14 | 2027-07-22 | 9d | 4d |  |  | Legal & Customer Treatment Lead [12%]; Core Banking Product Owner [12%]; Senior Business Analyst [50%]; Core Configuration Specialist [66%]; Deposit Product SME [50%]; Core Banking Solution Architect [12%]; Data Migration Lead [12%]; Finance Reconciliation Lead [12%]; Project Manager [12%] | 108.48h | 108.48h | 16,608 | 16,608 | 16,608 |
| 24 | 2.1.4 | Obtain Product approval for treatments |  | 5d | 2027-07-28 A | 2027-08-04 | 22, 23 | 99% | 0d | 2027-07-28 | 2027-08-04 | 5d | 2027-07-28 | 2027-08-04 | 5d | 0d |  |  | Core Banking Product Owner [50%]; Project Manager; Core Configuration Specialist [200%]; Senior Business Analyst [200%]; Deposit Product SME [200%]; Core Banking Solution Architect; Data Migration Lead; Finance Reconciliation Lead; Legal & Customer Treatment Lead [75%] | 400h | 400h | 61,850 | 61,850 | 61,850 |
| 25 | 2.1.5 | Obtain CCB approval for treatments |  | 5d | 2027-08-04 A | 2027-08-11 | 24 | 99% | 0d | 2027-08-04 | 2027-08-11 | 5d | 2027-08-04 | 2027-08-11 | 438.5d |  |  |  | Project Manager; Core Banking Product Owner [50%]; Legal & Customer Treatment Lead [75%]; Core Configuration Specialist [200%]; Senior Business Analyst [200%]; Deposit Product SME [200%]; Core Banking Solution Architect; Data Migration Lead; Finance Reconciliation Lead | 380h | 380h | 58,350 | 58,350 | 58,350 |

| ID | WBS | Task | Type | Duration | Start | Finish | Predecessors | Complete | Remaining | Baseline start | Baseline finish | Baseline duration | Baseline 1 start | Baseline 1 finish | Total slack | Free slack | Constraint | Deadline | Resources | Work | Actual work | Cost | Baseline cost | Actual cost |
| --- | --- | --- | --- | --- | --- | --- | --- | --- | --- | --- | --- | --- | --- | --- | --- | --- | --- | --- | --- | --- | --- | --- | --- | --- |
| 26 | 2.2 | **Core Configuration Design** |  | 35d | 2027-07-14 A | 2027-09-01 |  | 99% | 0d | 2027-07-14 | 2027-09-01 | 35d | 2027-07-14 | 2027-09-01 | 423.5d |  |  |  | Core Platform Licence and Vendor Services [0.1%]; Core Configuration and Implementation Partner [0.1%] | 2627.44h | 2627.44h | 9,408,004 | 9,408,004 | 9,408,004 |
| 27 | 2.2.1 | Define product parameters and account structures |  | 10d | 2027-07-14 A | 2027-07-28 | 21 | 99% | 0d | 2027-07-14 | 2027-07-28 | 10d | 2027-07-14 | 2027-07-28 | 8d | 0d |  |  | Deposit Product SME [200%]; Senior Business Analyst [200%]; Core Banking Solution Architect; Core Configuration Specialist [200%]; Data Migration Lead; Finance Reconciliation Lead; Project Manager; Legal & Customer Treatment Lead [75%]; Core Banking Product Owner [50%] | 550h | 550h | 88,900 | 88,900 | 88,900 |
| 28 | 2.2.2 | Define interest rules |  | 10d | 2027-07-28 A | 2027-08-11 | 27 | 99% | 0d | 2027-07-28 | 2027-08-11 | 10d | 2027-07-28 | 2027-08-11 | 10d | 0d |  |  | Deposit Product SME [200%]; Core Banking Solution Architect; Core Configuration Specialist [200%]; Senior Business Analyst [200%]; Data Migration Lead; Finance Reconciliation Lead; Project Manager; Legal & Customer Treatment Lead [75%]; Core Banking Product Owner [50%] | 560h | 560h | 84,800 | 84,800 | 84,800 |
| 29 | 2.2.3 | Define fee and limit rules |  | 10d | 2027-07-28 A | 2027-08-11 | 27 | 99% | 0d | 2027-07-28 | 2027-08-11 | 10d | 2027-07-28 | 2027-08-11 | 10d | 0d |  |  | Deposit Product SME [200%]; Core Banking Solution Architect; Core Configuration Specialist [200%]; Senior Business Analyst [200%]; Data Migration Lead; Finance Reconciliation Lead; Project Manager; Legal & Customer Treatment Lead [75%]; Core Banking Product Owner [50%] | 560h | 560h | 84,800 | 84,800 | 84,800 |
| 30 | 2.2.4 | Define posting rules |  | 10d | 2027-08-11 A | 2027-08-25 | 28, 29 | 99% | 0d | 2027-08-11 | 2027-08-25 | 10d | 2027-08-11 | 2027-08-25 | 5d | 0d |  |  | Core Configuration Specialist [66%]; Core Banking Solution Architect [12%]; Deposit Product SME [50%]; Senior Business Analyst [50%]; Data Migration Lead [12%]; Finance Reconciliation Lead [12%]; Project Manager [12%]; Legal & Customer Treatment Lead [12%]; Core Banking Product Owner [12%] | 160.8h | 160.8h | 24,780 | 24,780 | 24,780 |
| 31 | 2.2.5 | Define statements and notices |  | 8d | 2027-07-28 A | 2027-08-09 | 27 | 99% | 0d | 2027-07-28 | 2027-08-09 | 8d | 2027-07-28 | 2027-08-09 | 8d | 0d |  |  | Deposit Product SME [200%]; Senior Business Analyst [200%]; Legal & Customer Treatment Lead [75%]; Core Configuration Specialist [200%]; Core Banking Solution Architect; Data Migration Lead; Finance Reconciliation Lead; Project Manager; Core Banking Product Owner [50%] | 432h | 432h | 69,520 | 69,520 | 69,520 |
| 32 | 2.2.6 | Define customer disclosures |  | 8d | 2027-08-09 A | 2027-08-19 | 31 | 99% | 0d | 2027-08-09 | 2027-08-19 | 8d | 2027-08-09 | 2027-08-19 | 9d | 4d |  |  | Senior Business Analyst [50%]; Legal & Customer Treatment Lead [12%]; Deposit Product SME [50%]; Core Configuration Specialist [66%]; Core Banking Solution Architect [12%]; Data Migration Lead [12%]; Finance Reconciliation Lead [12%]; Project Manager [12%]; Core Banking Product Owner [12%] | 128.64h | 128.64h | 19,824 | 19,824 | 19,824 |
| 33 | 2.2.7 | Review and approve configuration design |  | 5d | 2027-08-25 A | 2027-09-01 | 30, 32 | 99% | 0d | 2027-08-25 | 2027-09-01 | 5d | 2027-08-25 | 2027-09-01 | 423.5d |  |  |  | Core Banking Solution Architect; Core Configuration Specialist [200%]; Deposit Product SME [200%]; Legal & Customer Treatment Lead [75%]; Senior Business Analyst [200%]; Data Migration Lead; Finance Reconciliation Lead; Project Manager; Core Banking Product Owner [50%] | 236h | 236h | 35,380 | 35,380 | 35,380 |
| 34 | 2.3 | **Conversion & Reconciliation Design** |  | 56d | 2027-07-14 A | 2027-09-30 |  | 99% | 0d | 2027-07-14 | 2027-09-30 | 56d | 2027-07-14 | 2027-09-30 | 402.5d |  |  |  | Integration and Finance Reconciliation Build [0.1%] | 3143.2h | 3143.2h | 1,503,204 | 1,503,204 | 1,503,204 |
| 35 | 2.3.1 | Define source-to-target account mapping |  | 15d | 2027-07-14 A | 2027-08-04 | 21 | 99% | 0d | 2027-07-14 | 2027-08-04 | 15d | 2027-07-14 | 2027-08-04 | 10d | 0d |  |  | Data Migration Lead; Senior Business Analyst [200%]; Core Banking Solution Architect; Deposit Product SME [200%]; Core Configuration Specialist [200%]; Finance Reconciliation Lead; Project Manager; Legal & Customer Treatment Lead [75%]; Core Banking Product Owner [50%] | 690h | 690h | 110,550 | 110,550 | 110,550 |
| 36 | 2.3.2 | Define balance conversion rules |  | 10d | 2027-08-04 A | 2027-08-18 | 35 | 99% | 0d | 2027-08-04 | 2027-08-18 | 10d | 2027-08-04 | 2027-08-18 | 8d | 0d |  |  | Data Migration Lead; Finance Reconciliation Lead; Senior Business Analyst [200%]; Deposit Product SME [200%]; Core Configuration Specialist [200%]; Core Banking Solution Architect; Project Manager; Legal & Customer Treatment Lead [75%]; Core Banking Product Owner [50%] | 480h | 480h | 78,600 | 78,600 | 78,600 |
| 37 | 2.3.3 | Define transaction conversion rules |  | 10d | 2027-08-04 A | 2027-08-18 | 35 | 99% | 0d | 2027-08-04 | 2027-08-18 | 10d | 2027-08-04 | 2027-08-18 | 8d | 0d |  |  | Data Migration Lead; Finance Reconciliation Lead; Senior Business Analyst [200%]; Core Configuration Specialist [200%]; Deposit Product SME [200%]; Core Banking Solution Architect; Project Manager; Legal & Customer Treatment Lead [75%]; Core Banking Product Owner [50%] | 620h | 620h | 98,900 | 98,900 | 98,900 |
| 38 | 2.3.4 | Define financial reconciliation controls |  | 10d | 2027-08-18 A | 2027-09-01 | 36, 37 | 99% | 0d | 2027-08-18 | 2027-09-01 | 10d | 2027-08-18 | 2027-09-01 | 8d | 0d |  |  | Finance Reconciliation Lead; Data Migration Lead; Senior Business Analyst [200%]; Core Configuration Specialist [200%]; Deposit Product SME [200%]; Core Banking Solution Architect; Project Manager; Legal & Customer Treatment Lead [75%]; Core Banking Product Owner [50%] | 600h | 600h | 96,300 | 96,300 | 96,300 |
| 39 | 2.3.5 | Define customer-level reconciliation controls |  | 8d | 2027-08-18 A | 2027-08-30 | 36, 37 | 99% | 0d | 2027-08-18 | 2027-08-30 | 8d | 2027-08-18 | 2027-08-30 | 23d | 18d |  |  | Finance Reconciliation Lead [12%]; Data Migration Lead [12%]; Senior Business Analyst [50%]; Core Configuration Specialist [66%]; Deposit Product SME [50%]; Core Banking Solution Architect [12%]; Project Manager [12%]; Legal & Customer Treatment Lead [12%]; Core Banking Product Owner [12%] | 144.64h | 144.64h | 22,144 | 22,144 | 22,144 |
| 40 | 2.3.6 | Define exception and suspense processes |  | 8d | 2027-09-01 A | 2027-09-13 | 38 | 99% | 0d | 2027-09-01 | 2027-09-13 | 8d | 2027-09-01 | 2027-09-13 | 8d | 0d |  |  | Finance Reconciliation Lead; Senior Business Analyst [200%]; Deposit Product SME [200%]; Core Configuration Specialist [200%]; Core Banking Solution Architect; Data Migration Lead; Project Manager; Legal & Customer Treatment Lead [75%]; Core Banking Product Owner [50%] | 416h | 416h | 67,840 | 67,840 | 67,840 |
| 41 | 2.3.7 | Define rollback process |  | 8d | 2027-09-13 A | 2027-09-23 | 40 | 99% | 0d | 2027-09-13 | 2027-09-23 | 8d | 2027-09-13 | 2027-09-23 | 5d | 0d |  |  | Data Migration Lead [14%]; Core Banking Solution Architect [14%]; Finance Reconciliation Lead [14%]; Core Configuration Specialist [57%]; Senior Business Analyst [14%]; Deposit Product SME [42%]; Project Manager [14%]; Legal & Customer Treatment Lead [14%]; Core Banking Product Owner [14%]; Integration Lead [14%]; Test Analyst [57%] | 162.56h | 162.56h | 23,920 | 23,920 | 23,920 |
| 42 | 2.3.8 | Approve conversion and reconciliation design |  | 5d | 2027-09-23 A | 2027-09-30 | 39, 41 | 99% | 0d | 2027-09-23 | 2027-09-30 | 5d | 2027-09-23 | 2027-09-30 | 402.5d |  |  |  | Project Manager [20%]; Data Migration Lead [25%]; Finance Reconciliation Lead [25%]; Core Banking Solution Architect [25%] | 30h | 30h | 4,950 | 4,950 | 4,950 |
| 43 | 2.4 | Schedule Contingency Buffer – Design Gate | milestone | 0d | 2027-09-30 A | 2027-09-30 A | 25, 42, 33 | 100% |  | 2027-09-30 | 2027-09-30 | 0d | 2027-09-30 | 2027-09-30 |  |  |  |  |  |  |  |  |  |  |
| 44 | 2.5 | M2 – Target product configuration and conversion design completed | milestone | 0d | 2027-12-31 A | 2027-12-31 A | 43 | 100% |  | 2027-12-31 | 2027-12-31 | 0d | 2027-12-31 | 2027-12-31 |  |  | finish no earlier than 2027-12-31 | 2027-12-31 |  |  |  |  |  |  |
| 45 | 3 | **Configuration, Integration & Migration Build** |  | 138.4d | 2027-12-31 A | 2028-07-21 |  | 86% | 18.85d | 2027-12-31 | 2028-05-24 | 98d | 2027-12-31 | 2028-05-24 | 201.1d |  |  |  |  | 12722.8h | 12146.8h | 29,981,830.8 | 29,846,830.8 | 29,355,267.07 |
| 46 | 3.1 | **Configure Target Core** |  | 71d | 2027-12-31 A | 2028-04-12 |  | 99% | 0d | 2027-12-31 | 2028-04-12 | 71d | 2027-12-31 | 2028-04-12 | 268.5d |  |  |  | Core Platform Licence and Vendor Services [0.1%]; Core Configuration and Implementation Partner [0.1%] | 4972.24h | 4972.24h | 17,719,122.4 | 17,719,122.4 | 17,719,122.4 |
| 47 | 3.1.1 | Configure transaction account products |  | 20d | 2027-12-31 A | 2028-02-01 | 44 | 99% | 0d | 2027-12-31 | 2028-02-01 | 20d | 2027-12-31 | 2028-02-01 | 12d | 0d |  |  | Core Configuration Specialist [200%]; Core Banking Solution Architect [50%]; Senior Business Analyst [200%]; Integration Lead; Data Migration Lead; Project Manager; Core Banking Product Owner [50%]; Test Analyst | 1000h | 1000h | 142,200 | 142,200 | 142,200 |
| 48 | 3.1.2 | Configure savings account products |  | 20d | 2027-12-31 A | 2028-02-01 | 44 | 99% | 0d | 2027-12-31 | 2028-02-01 | 20d | 2027-12-31 | 2028-02-01 | 12d | 0d |  |  | Core Configuration Specialist [200%]; Core Banking Solution Architect [50%]; Senior Business Analyst [200%]; Integration Lead; Data Migration Lead; Project Manager; Core Banking Product Owner [50%]; Test Analyst | 1000h | 1000h | 142,200 | 142,200 | 142,200 |
| 49 | 3.1.3 | Configure interest rules |  | 12d | 2028-02-01 A | 2028-02-17 | 47, 48 | 99% | 0d | 2028-02-01 | 2028-02-17 | 12d | 2028-02-01 | 2028-02-17 | 15d | 0d |  |  | Core Configuration Specialist [200%]; Senior Business Analyst [200%]; Integration Lead; Data Migration Lead; Project Manager; Core Banking Product Owner [50%]; Test Analyst; Core Banking Solution Architect [50%] | 444h | 444h | 65,940 | 65,940 | 65,940 |
| 50 | 3.1.4 | Configure fees and limits |  | 12d | 2028-02-01 A | 2028-02-17 | 47, 48 | 99% | 0d | 2028-02-01 | 2028-02-17 | 12d | 2028-02-01 | 2028-02-17 | 15d | 0d |  |  | Core Configuration Specialist [200%]; Senior Business Analyst [200%]; Integration Lead; Data Migration Lead; Project Manager; Core Banking Product Owner [50%]; Test Analyst; Core Banking Solution Architect [50%] | 444h | 444h | 65,940 | 65,940 | 65,940 |
| 51 | 3.1.5 | Configure account lifecycle rules |  | 15d | 2028-02-01 A | 2028-02-22 | 47, 48 | 99% | 0d | 2028-02-01 | 2028-02-22 | 15d | 2028-02-01 | 2028-02-22 | 10d | 0d |  |  | Core Configuration Specialist [200%]; Senior Business Analyst [200%]; Integration Lead; Data Migration Lead; Project Manager; Core Banking Product Owner [50%]; Test Analyst; Core Banking Solution Architect [50%] | 555h | 555h | 82,425 | 82,425 | 82,425 |
| 52 | 3.1.6 | Configure accounting events |  | 15d | 2028-02-17 A | 2028-03-09 | 49, 50 | 99% | 0d | 2028-02-17 | 2028-03-09 | 15d | 2028-02-17 | 2028-03-09 | 292.5d |  |  |  | Core Configuration Specialist [200%]; Core Banking Solution Architect [50%]; Senior Business Analyst [200%]; Integration Lead; Data Migration Lead; Project Manager; Core Banking Product Owner [50%]; Test Analyst | 735h | 735h | 104,175 | 104,175 | 104,175 |
| 53 | 3.1.7 | Configure operational controls |  | 10d | 2028-02-22 A | 2028-03-07 | 51 | 99% | 0d | 2028-02-22 | 2028-03-07 | 10d | 2028-02-22 | 2028-03-07 | 294.5d |  |  |  | Core Configuration Specialist [200%]; Senior Business Analyst [200%]; Integration Lead; Data Migration Lead; Project Manager; Core Banking Product Owner [50%]; Test Analyst; Core Banking Solution Architect [50%] | 360h | 360h | 53,300 | 53,300 | 53,300 |
| 54 | 3.1.8 | Review target core configuration |  | 24d | 2028-03-09 A | 2028-04-12 A | 52, 53 | 100% |  | 2028-03-09 | 2028-04-12 | 24d | 2028-03-09 | 2028-04-12 |  |  |  |  | Core Configuration Specialist [57%]; Core Banking Solution Architect [14%]; Senior Business Analyst [14%]; Integration Lead [14%]; Data Migration Lead [14%]; Project Manager [14%]; Core Banking Product Owner [14%]; Test Analyst [57%]; Deposit Product SME [42%]; Finance Reconciliation Lead [14%]; Legal & Customer Treatment Lead [14%] | 434.24h | 434.24h | 62,942.4 | 62,942.4 | 62,942.4 |

| ID | WBS | Task | Type | Duration | Start | Finish | Predecessors | Complete | Remaining | Baseline start | Baseline finish | Baseline duration | Baseline 1 start | Baseline 1 finish | Total slack | Free slack | Constraint | Deadline | Resources | Work | Actual work | Cost | Baseline cost | Actual cost | 恢复 |
| --- | --- | --- | --- | --- | --- | --- | --- | --- | --- | --- | --- | --- | --- | --- | --- | --- | --- | --- | --- | --- | --- | --- | --- | --- | --- |
| 55 | 3.2 | **Build Interfaces & Reports** |  | 24d | 2027-12-31 A | 2028-02-07 |  | 99% | 0d | 2027-12-31 | 2028-02-07 | 24d | 2027-12-31 | 2028-02-07 | 315.5d |  |  |  | Core Configuration and Implementation Partner [0.1%]; Integration and Finance Reconciliation Build [0.1%] | 2031.76h | 2031.76h | 5,934,738.4 | 5,799,738.4 | 5,934,738.4 |  |
| 56 | 3.2.1 | Build identity and customer interfaces |  | 16d | 2027-12-31 A | 2028-01-25 | 44 | 99% | 0d | 2027-12-31 | 2028-01-25 | 16d | 2027-12-31 | 2028-01-25 | 108d | 55d |  |  | Integration Lead [14%]; Senior Business Analyst [14%]; Core Configuration Specialist [57%]; Data Migration Lead [14%]; Project Manager [14%]; Core Banking Product Owner [14%]; Test Analyst [57%]; Core Banking Solution Architect [14%]; Deposit Product SME [42%]; Finance Reconciliation Lead [14%]; Legal & Customer Treatment Lead [14%] | 300.16h | 300.16h | 45,094.4 | 45,094.4 | 45,094.4 |  |
| 57 | 3.2.2 | Build payment interfaces |  | 20d | 2027-12-31 A | 2028-02-01 | 44 | 99% | 0d | 2027-12-31 | 2028-02-01 | 20d | 2027-12-31 | 2028-02-01 | 319.5d |  |  |  | Integration Lead [14%]; Core Configuration Specialist [57%]; Core Banking Solution Architect [14%]; Senior Business Analyst [14%]; Data Migration Lead [14%]; Project Manager [14%]; Core Banking Product Owner [14%]; Test Analyst [57%]; Deposit Product SME [42%]; Finance Reconciliation Lead [14%]; Legal & Customer Treatment Lead [14%] | 395.2h | 395.2h | 57,952 | 57,952 | 57,952 |  |
| 58 | 3.2.3 | Build channel interfaces |  | 15d | 2027-12-31 A | 2028-01-24 | 44 | 99% | 0d | 2027-12-31 | 2028-01-24 | 15d | 2027-12-31 | 2028-01-24 | 109d | 56d |  |  | Integration Lead [14%]; Core Configuration Specialist [57%]; Senior Business Analyst [14%]; Data Migration Lead [14%]; Project Manager [14%]; Core Banking Product Owner [14%]; Test Analyst [57%]; Core Banking Solution Architect [14%]; Deposit Product SME [42%]; Finance Reconciliation Lead [14%]; Legal & Customer Treatment Lead [14%] | 242.4h | 242.4h | 36,924 | 36,924 | 36,924 |  |
| 59 | 3.2.4 | Build finance interfaces |  | 15d | 2027-12-31 A | 2028-01-24 | 44 | 99% | 0d | 2027-12-31 | 2028-01-24 | 15d | 2027-12-31 | 2028-01-24 | 9d | 0d |  |  | Integration Lead [14%]; Core Configuration Specialist [57%]; Senior Business Analyst [14%]; Data Migration Lead [14%]; Project Manager [14%]; Core Banking Product Owner [14%]; Test Analyst [57%]; Core Banking Solution Architect [14%]; Deposit Product SME [42%]; Finance Reconciliation Lead [14%]; Legal & Customer Treatment Lead [14%] | 296.4h | 296.4h | 43,464 | 43,464 | 43,464 |  |
| 60 | 3.2.5 | Build compliance and monitoring feeds |  | 10d | 2027-12-31 A | 2028-01-17 | 44 | 99% | 0d | 2027-12-31 | 2028-01-17 | 10d | 2027-12-31 | 2028-01-17 | 4d | 0d |  |  | Integration Lead [14%]; Senior Business Analyst [14%]; Core Configuration Specialist [57%]; Data Migration Lead [14%]; Project Manager [14%]; Core Banking Product Owner [14%]; Test Analyst [57%]; Core Banking Solution Architect [14%]; Deposit Product SME [42%]; Finance Reconciliation Lead [14%]; Legal & Customer Treatment Lead [14%] | 181.6h | 181.6h | 27,524 | 27,524 | 27,524 |  |
| 61 | 3.2.6 | Build reconciliation dashboard |  | 9d | 2028-01-24 A | 2028-02-07 | 59 | 99% | 0d | 2028-01-24 | 2028-02-07 | 9d | 2028-01-24 | 2028-02-07 | 100d |  |  |  | Integration Lead; Core Configuration Specialist [200%]; Senior Business Analyst [200%]; Data Migration Lead; Project Manager; Core Banking Product Owner [50%]; Test Analyst; Core Banking Solution Architect [50%] | 396h | 396h | 55,920 | 55,920 | 55,920 |  |
| 62 | 3.2.7 | Build exception reporting |  | 4d | 2028-01-17 A | 2028-01-21 | 60 | 99% | 0d | 2028-01-17 | 2028-01-21 | 4d | 2028-01-17 | 2028-01-21 | 110d |  |  |  | Integration Lead; Senior Business Analyst [200%]; Core Configuration Specialist [200%]; Data Migration Lead; Project Manager; Core Banking Product Owner [50%]; Test Analyst; Core Banking Solution Architect [50%] | 220h | 220h | 32,860 | 32,860 | 32,860 |  |
| 63 | 3.3 | **Build Migration Capability** |  | 138.4d | 2027-12-31 A | 2028-07-21 |  | 70% | 40.91d | 2027-12-31 | 2028-05-24 | 98d | 2027-12-31 | 2028-05-24 | 201.1d |  |  |  | Migration Development and Tooling [0.1%]; Legacy Archive and Decommissioning [0.1%] | 5718.8h | 5142.8h | 6,327,970 | 6,327,970 | 5,701,406.27 |  |
| 64 | 3.3.1 | Develop extraction routines |  | 15d | 2027-12-31 A | 2028-01-24 | 44 | 99% | 0d | 2027-12-31 | 2028-01-24 | 15d | 2027-12-31 | 2028-01-24 | 20d | 0d |  |  | Data Migration Lead; Core Configuration Specialist [200%]; Senior Business Analyst [200%]; Integration Lead; Project Manager; Core Banking Product Owner [50%]; Test Analyst; Core Banking Solution Architect [50%] | 495h | 495h | 73,125 | 73,125 | 73,125 |  |
| 65 | 3.3.2 | Develop transformation routines |  | 20d | 2028-01-24 A | 2028-02-22 | 64 | 99% | 0d | 2028-01-24 | 2028-02-22 | 20d | 2028-01-24 | 2028-02-22 | 15d | 0d |  |  | Data Migration Lead; Core Configuration Specialist [200%]; Senior Business Analyst [200%]; Integration Lead; Project Manager; Core Banking Product Owner [50%]; Test Analyst; Core Banking Solution Architect [50%] | 700h | 700h | 103,700 | 103,700 | 103,700 |  |
| 66 | 3.3.3 | Develop loading routines |  | 15d | 2028-02-22 A | 2028-03-14 | 65 | 99% | 0d | 2028-02-22 | 2028-03-14 | 15d | 2028-02-22 | 2028-03-14 | 10d | 0d |  |  | Data Migration Lead; Core Configuration Specialist [200%]; Senior Business Analyst [200%]; Integration Lead; Project Manager; Core Banking Product Owner [50%]; Test Analyst; Core Banking Solution Architect [50%] | 735h | 735h | 105,075 | 105,075 | 105,075 |  |
| 67 | 3.3.4 | Develop validation controls |  | 12d | 2028-03-14 A | 2028-03-30 | 66 | 99% | 0d | 2028-03-14 | 2028-03-30 | 12d | 2028-03-14 | 2028-03-30 | 277.5d |  |  |  | Data Migration Lead; Core Configuration Specialist [200%]; Senior Business Analyst [200%]; Integration Lead; Project Manager; Core Banking Product Owner [50%]; Test Analyst; Core Banking Solution Architect [50%] | 540h | 540h | 76,380 | 76,380 | 76,380 |  |
| 68 | 3.3.5 | Develop restart controls |  | 10d | 2028-03-14 A | 2028-03-28 | 66 | 99% | 0d | 2028-03-14 | 2028-03-28 | 10d | 2028-03-14 | 2028-03-28 | 83d |  |  |  | Data Migration Lead; Senior Business Analyst [200%]; Core Configuration Specialist [200%]; Integration Lead; Project Manager; Core Banking Product Owner [50%]; Test Analyst; Core Banking Solution Architect [50%] | 440h | 440h | 67,100 | 67,100 | 67,100 |  |
| 69 | 3.3.6 | Develop audit controls |  | 10d | 2028-03-30 A | 2028-04-13 A | 67 | 100% |  | 2028-03-30 | 2028-04-13 | 10d | 2028-03-30 | 2028-04-13 |  |  |  |  | Data Migration Lead; Senior Business Analyst [200%]; Core Configuration Specialist [200%]; Integration Lead; Project Manager; Core Banking Product Owner [50%]; Test Analyst; Core Banking Solution Architect [50%] | 440h | 440h | 67,100 | 67,100 | 67,100 |  |
| 70 | 3.3.7 | Prepare statement-history migration |  | 15d | 2028-02-22 A | 2028-03-14 | 65 | 99% | 0d | 2028-02-22 | 2028-03-14 | 15d | 2028-02-22 | 2028-03-14 | 74d | 0d |  |  | Data Migration Lead [14%]; Senior Business Analyst [14%]; Core Configuration Specialist [57%]; Integration Lead [14%]; Project Manager [14%]; Core Banking Product Owner [14%]; Test Analyst [57%]; Core Banking Solution Architect [14%]; Deposit Product SME [42%]; Finance Reconciliation Lead [14%]; Legal & Customer Treatment Lead [14%] | 304.8h | 304.8h | 44,850 | 44,850 | 44,850 |  |
| 71 | 3.3.8 | Prepare archive-access solution |  | 88.4d | 2028-03-14 A | 2028-07-21 | 70 | 38% | 54.8d | 2028-03-14 | 2028-05-24 | 48d | 2028-03-14 | 2028-05-24 | 4.6d |  |  |  | Data Migration Lead; Core Configuration Specialist [200%]; Senior Business Analyst [200%]; Integration Lead; Project Manager; Core Banking Product Owner [50%]; Test Analyst; Core Banking Solution Architect [50%] | 2064h | 1488h | 290,640 | 290,640 | 210,288 |  |
| 72 | 4 | **Testing, Rehearsal & Cutover** |  | 212.5d? | 2028-04-12 A | 2029-02-06 |  | 17% | 175.92d? | 2028-04-12 | 2029-02-06 | 212.5d? | 2028-04-12 | 2029-02-06 | 10d |  |  |  |  | 10720.7h | 1371.92h | 15,059,722.95 | 15,059,722.95 | 6,713,894.6 |  |
| 73 | 4.1 | **Functional & Integrated Testing** |  | 73.5d | 2028-04-12 A | 2028-07-31 |  | 30% | 51.64d | 2028-04-12 | 2028-05-23 | 26d | 2028-04-12 | 2028-05-23 | -16d | 0d |  |  | Core Platform Licence and Vendor Services [0.1%]; Testing Environments and Assurance [0.1%] | 2400.44h | 1371.92h | 7,349,259.2 | 7,349,259.2 | 6,713,894.6 |  |
| 74 | 4.1.1 | Validate product calculations |  | 10d | 2028-04-12 A | 2028-05-01 A | 54 | 100% |  | 2028-04-12 | 2028-05-01 | 10d | 2028-04-12 | 2028-05-01 |  |  |  |  | Test Manager [12%]; Test Analyst [50%]; Core Configuration Specialist [50%]; Data Migration Lead [12%]; Deposit Product SME [35%]; Finance Reconciliation Lead [12%]; Integration Lead [12%]; Operational Readiness Lead [12%]; Project Manager [12%]; Core Banking Product Owner [12%]; Core Banking Solution Architect [12%]; Legal & Customer Treatment Lead [12%]; Senior Business Analyst [35%] | 192.8h | 192.8h | 27,544 | 27,544 | 27,544 |  |
| 75 | 4.1.2 | Validate interest and fee calculations |  | 54.5d | 2028-04-12 A | 2028-07-04 | 54 | 16% | 46d | 2028-04-12 | 2028-05-01 | 10d | 2028-04-12 | 2028-05-01 | -17.5d | 0d |  |  | Test Analyst [50%]; Test Manager [12%]; Core Configuration Specialist [50%]; Finance Reconciliation Lead [12%]; Data Migration Lead [12%]; Deposit Product SME [35%]; Integration Lead [12%]; Operational Readiness Lead [12%]; Project Manager [12%]; Core Banking Product Owner [12%]; Core Banking Solution Architect [12%]; Legal & Customer Treatment Lead [12%]; Senior Business Analyst [35%] | 192.8h | 166.88h | 27,544 | 27,544 | 23,907.4 |  |
| 76 | 4.1.3 | Validate accounting outcomes |  | 56d | 2028-04-12 A | 2028-07-05 | 54, 59 | 13% | 49d | 2028-04-12 | 2028-05-01 | 10d | 2028-04-12 | 2028-05-01 | -19d | 0d |  |  | Test Manager [12%]; Test Analyst [50%]; Finance Reconciliation Lead [12%]; Core Configuration Specialist [50%]; Data Migration Lead [12%]; Deposit Product SME [35%]; Integration Lead [12%]; Operational Readiness Lead [12%]; Project Manager [12%]; Core Banking Product Owner [12%]; Core Banking Solution Architect [12%]; Legal & Customer Treatment Lead [12%]; Senior Business Analyst [35%] | 212.8h | 148.96h | 30,844 | 30,844 | 21,590.8 |  |
| 77 | 4.1.4 | Validate customer journeys |  | 57.5d | 2028-04-12 A | 2028-07-07 | 54, 56, 58 | 10% | 52d | 2028-04-12 | 2028-05-01 | 10d | 2028-04-12 | 2028-05-01 | -20.5d | 0d |  |  | Test Analyst [50%]; Test Manager [12%]; Integration Lead [12%]; Core Configuration Specialist [50%]; Data Migration Lead [12%]; Deposit Product SME [35%]; Finance Reconciliation Lead [12%]; Operational Readiness Lead [12%]; Project Manager [12%]; Core Banking Product Owner [12%]; Core Banking Solution Architect [12%]; Legal & Customer Treatment Lead [12%]; Senior Business Analyst [35%] | 212.8h | 117.04h | 30,844 | 30,844 | 16,964.2 |  |
| 78 | 4.1.5 | Validate service processes |  | 8d | 2028-04-12 A | 2028-04-27 A | 54, 58 | 100% |  | 2028-04-12 | 2028-04-27 | 8d | 2028-04-12 | 2028-04-27 |  |  |  |  | Test Analyst [50%]; Test Manager [12%]; Operational Readiness Lead [12%]; Core Configuration Specialist [50%]; Data Migration Lead [12%]; Deposit Product SME [35%]; Finance Reconciliation Lead [12%]; Integration Lead [12%]; Project Manager [12%]; Core Banking Product Owner [12%]; Core Banking Solution Architect [12%]; Legal & Customer Treatment Lead [12%]; Senior Business Analyst [35%] | 163.84h | 163.84h | 23,971.2 | 23,971.2 | 23,971.2 |  |
| 79 | 4.1.6 | Complete performance testing |  | 10d | 2028-04-12 A | 2028-05-01 A | 54, 56, 57, 58, 59 | 100% |  | 2028-04-12 | 2028-05-01 | 10d | 2028-04-12 | 2028-05-01 |  |  |  |  | Test Manager [12%]; Test Analyst [50%]; Integration Lead [12%]; Core Configuration Specialist [50%]; Data Migration Lead [12%]; Deposit Product SME [35%]; Finance Reconciliation Lead [12%]; Operational Readiness Lead [12%]; Project Manager [12%]; Core Banking Product Owner [12%]; Core Banking Solution Architect [12%]; Legal & Customer Treatment Lead [12%]; Senior Business Analyst [35%] | 192.8h | 192.8h | 27,544 | 27,544 | 27,544 |  |
| 80 | 4.1.7 | Complete security testing |  | 10d | 2028-04-12 A | 2028-05-01 A | 54, 56, 60 | 100% |  | 2028-04-12 | 2028-05-01 | 10d | 2028-04-12 | 2028-05-01 |  |  |  |  | Test Manager [12%]; Test Analyst [50%]; Integration Lead [12%]; Core Configuration Specialist [50%]; Data Migration Lead [12%]; Deposit Product SME [35%]; Finance Reconciliation Lead [12%]; Operational Readiness Lead [12%]; Project Manager [12%]; Core Banking Product Owner [12%]; Core Banking Solution Architect [12%]; Legal & Customer Treatment Lead [12%]; Senior Business Analyst [35%] | 204.8h | 204.8h | 29,964 | 29,964 | 29,964 |  |
| 81 | 4.1.8 | Complete resilience testing |  | 10d | 2028-04-12 A | 2028-05-01 A | 54, 56, 57 | 100% |  | 2028-04-12 | 2028-05-01 | 10d | 2028-04-12 | 2028-05-01 |  |  |  |  | Test Analyst [50%]; Test Manager [12%]; Core Configuration Specialist [50%]; Integration Lead [12%]; Data Migration Lead [12%]; Deposit Product SME [35%]; Finance Reconciliation Lead [12%]; Operational Readiness Lead [12%]; Project Manager [12%]; Core Banking Product Owner [12%]; Core Banking Solution Architect [12%]; Legal & Customer Treatment Lead [12%]; Senior Business Analyst [35%] | 184.8h | 184.8h | 26,664 | 26,664 | 26,664 |  |
| 82 | 4.1.9 | Resolve critical testing defects |  | 12d | 2028-07-07 | 2028-07-25 | 75, 76, 77, 78, 79, 80, 81, 74 |  |  | 2028-05-01 | 2028-05-17 | 12d | 2028-05-01 | 2028-05-17 | -20.5d | 0d |  |  | Test Manager; Test Analyst [200%]; Core Configuration Specialist [200%]; Integration Lead; Data Migration Lead; Deposit Product SME; Finance Reconciliation Lead; Operational Readiness Lead; Project Manager | 594h |  | 86,490 | 86,490 |  | 2028年7月3日 |
| 83 | 4.1.10 | Complete SIT approval |  | 4d | 2028-07-25 | 2028-07-31 | 82 |  |  | 2028-05-17 | 2028-05-23 | 4d | 2028-05-17 | 2028-05-23 | -20.5d | 0d |  |  | Test Analyst [200%]; Test Manager; Project Manager; Core Configuration Specialist [200%]; Data Migration Lead; Deposit Product SME; Finance Reconciliation Lead; Integration Lead; Operational Readiness Lead | 249h |  | 37,850 | 37,850 |  |  |
| 84 | 4.2 | M3 – Core build, interfaces and SIT completed | milestone | 0d | 2028-07-31 | 2028-07-31 | 54, 61, 62, 83 |  |  | 2028-06-30 | 2028-06-30 | 0d | 2028-06-30 | 2028-06-30 | -20.5d | 0d | finish no earlier than 2028-06-30 | 2028-06-30 |  |  |  |  |  |  |  |

| ID | WBS | Task | Type | Duration | Start | Finish | Predecessors | Baseline start | Baseline finish | Baseline duration | Baseline 1 start | Baseline 1 finish | Total slack | Free slack | Constraint | Deadline | Calendar | Resources | Work | Cost | Baseline cost |
| --- | --- | --- | --- | --- | --- | --- | --- | --- | --- | --- | --- | --- | --- | --- | --- | --- | --- | --- | --- | --- | --- |
| 85 | 4.3 | **Migration Rehearsals** |  | 109d | 2028-07-31 | 2029-01-04 |  | 2028-06-30 | 2029-01-02 | 128d | 2028-06-30 | 2029-01-02 | -1.5d | 0d |  |  |  | Migration Development and Tooling [0.1%]; Integration and Finance Reconciliation Build [0.1%]; Testing Environments and Assurance [0.1%] | 7972h | 5,660,920 | 5,660,920 |
| 86 | 4.3.1 | Prepare rehearsal environment and data |  | 15d | 2028-07-31 | 2028-08-21 | 68, 69, 71, 84, 153 | 2028-06-30 | 2028-07-21 | 15d | 2028-06-30 | 2028-07-21 | -1.5d | 0d |  |  |  | Data Migration Lead; Test Manager; Test Analyst [200%]; Core Configuration Specialist [200%]; Deposit Product SME; Finance Reconciliation Lead; Integration Lead; Operational Readiness Lead; Project Manager | 840h | 127,350 | 127,350 |
| 87 | 4.3.2 | Execute rehearsal 1 (technical dry run) |  | 5d | 2028-08-21 | 2028-08-28 | 86 | 2028-07-21 | 2028-07-28 | 5d | 2028-07-21 | 2028-07-28 | -1.5d | 0d |  |  |  | Core Configuration Specialist [200%]; Data Migration Lead; Deposit Product SME; Finance Reconciliation Lead; Integration Lead; Operational Readiness Lead; Project Manager; Test Analyst [200%]; Test Manager | 400h | 57,600 | 57,600 |
| 88 | 4.3.3 | Analyse rehearsal 1 defects and timing |  | 10d | 2028-08-28 | 2028-09-11 | 87 | 2028-07-28 | 2028-08-11 | 10d | 2028-07-28 | 2028-08-11 | -1.5d | 0d |  |  |  | Core Configuration Specialist [200%]; Data Migration Lead; Deposit Product SME; Finance Reconciliation Lead; Integration Lead; Operational Readiness Lead; Project Manager; Test Analyst [200%]; Test Manager | 800h | 115,200 | 115,200 |
| 89 | 4.3.4 | Resolve rehearsal 1 defects |  | 20d | 2028-09-11 | 2028-10-10 | 88 | 2028-08-11 | 2028-09-08 | 20d | 2028-08-11 | 2028-09-08 | -1.5d | 0d |  |  |  | Core Configuration Specialist [200%]; Data Migration Lead; Deposit Product SME; Finance Reconciliation Lead; Integration Lead; Operational Readiness Lead; Project Manager; Test Analyst [200%]; Test Manager | 1600h | 230,400 | 230,400 |
| 90 | 4.3.5 | Tune conversion and sequencing rules |  | 10d | 2028-10-10 | 2028-10-24 | 89 | 2028-09-08 | 2028-09-22 | 10d | 2028-09-08 | 2028-09-22 | -1.5d | 0d |  |  |  | Core Configuration Specialist [200%]; Data Migration Lead; Deposit Product SME; Finance Reconciliation Lead; Integration Lead; Operational Readiness Lead; Project Manager; Test Analyst [200%]; Test Manager | 800h | 115,200 | 115,200 |
| 91 | 4.3.6 | Prepare rehearsal 2 data refresh |  | 10d | 2028-10-24 | 2028-11-07 | 90 | 2028-09-22 | 2028-10-09 | 10d | 2028-09-22 | 2028-10-09 | -1.5d | 0d |  |  |  | Core Configuration Specialist [200%]; Data Migration Lead; Deposit Product SME; Finance Reconciliation Lead; Integration Lead; Operational Readiness Lead; Project Manager; Test Analyst [200%]; Test Manager | 800h | 115,200 | 115,200 |
| 92 | 4.3.7 | Execute first full migration rehearsal |  | 5d | 2028-11-07 | 2028-11-14 | 91 | 2028-10-09 | 2028-10-16 | 5d | 2028-10-09 | 2028-10-16 | -1.5d | 0d |  |  |  | Data Migration Lead; Test Manager; Core Configuration Specialist [200%]; Finance Reconciliation Lead; Test Analyst [200%]; Deposit Product SME; Integration Lead; Operational Readiness Lead; Project Manager | 240h | 35,100 | 35,100 |
| 93 | 4.3.8 | Perform financial reconciliation |  | 8d | 2028-11-14 | 2028-11-24 | 92 | 2028-10-16 | 2028-10-26 | 8d | 2028-10-16 | 2028-10-26 | -1.5d | 0d |  |  |  | Finance Reconciliation Lead; Test Analyst [200%]; Data Migration Lead; Core Configuration Specialist [200%]; Deposit Product SME; Integration Lead; Operational Readiness Lead; Project Manager; Test Manager | 480h | 72,400 | 72,400 |
| 94 | 4.3.9 | Perform customer-level reconciliation |  | 8d | 2028-11-14 | 2028-11-24 | 92 | 2028-10-16 | 2028-10-26 | 8d | 2028-10-16 | 2028-10-26 | -1.5d | 0d |  |  |  | Data Migration Lead; Test Analyst [200%]; Finance Reconciliation Lead; Deposit Product SME; Core Configuration Specialist [200%]; Integration Lead; Operational Readiness Lead; Project Manager; Test Manager | 416h | 62,960 | 62,960 |
| 95 | 4.3.10 | Confirm reconciliation within tolerance |  | 5d | 2028-11-24 | 2028-12-01 | 93, 94 | 2028-10-26 | 2028-11-02 | 5d | 2028-10-26 | 2028-11-02 | -1.5d | 0d |  |  |  | Core Configuration Specialist [200%]; Data Migration Lead; Deposit Product SME; Finance Reconciliation Lead; Integration Lead; Operational Readiness Lead; Project Manager; Test Analyst [200%]; Test Manager | 400h | 57,600 | 57,600 |
| 96 | 4.3.11 | M4 – First full migration rehearsal and financial reconciliation completed | milestone | 0d | 2028-12-01 | 2028-12-01 | 154, 155, 95 | 2028-11-30 | 2028-11-30 | 0d | 2028-11-30 | 2028-11-30 | -1.5d | 0d |  | 2028-11-30 |  |  |  |  |  |
| 97 | 4.3.12 | Analyse defects and exceptions |  | 5d | 2028-12-01 | 2028-12-08 | 96 | 2028-11-30 | 2028-12-06 | 5d | 2028-11-30 | 2028-12-06 | -1.5d | 0d |  |  |  | Test Manager [50%]; Test Analyst [75%]; Data Migration Lead [25%]; Finance Reconciliation Lead [25%] | 70h | 9,300 | 9,300 |
| 98 | 4.3.13 | Analyse migration timing |  | 3d | 2028-11-14 | 2028-11-17 | 92 | 2028-10-17 | 2028-10-19 | 3d | 2028-10-17 | 2028-10-19 | 20.5d |  |  |  |  | Data Migration Lead [50%]; Test Manager [25%]; Core Configuration Specialist [25%] | 24h | 3,720 | 3,720 |
| 99 | 4.3.14 | Resolve rehearsal defects |  | 7d | 2028-12-08 | 2028-12-19 | 97 | 2028-12-06 | 2028-12-15 | 7d | 2028-12-06 | 2028-12-15 | -1.5d | 0d |  |  |  | Test Analyst [200%]; Test Manager; Core Configuration Specialist [200%]; Data Migration Lead; Deposit Product SME; Finance Reconciliation Lead; Integration Lead; Operational Readiness Lead; Project Manager | 322h | 46,970 | 46,970 |
| 100 | 4.3.15 | Tune migration sequencing |  | 4d | 2028-12-19 | 2028-12-27 | 98, 99 | 2028-12-15 | 2028-12-21 | 4d | 2028-12-15 | 2028-12-21 | -1.5d | 0d |  |  |  | Data Migration Lead; Core Configuration Specialist [200%]; Test Manager; Deposit Product SME; Finance Reconciliation Lead; Integration Lead; Operational Readiness Lead; Project Manager; Test Analyst [200%] | 232h | 32,200 | 32,200 |
| 101 | 4.3.16 | Tune rollback procedures |  | 4d | 2028-12-19 | 2028-12-27 | 99 | 2028-12-15 | 2028-12-21 | 4d | 2028-12-15 | 2028-12-21 | -1.5d | 0d |  |  |  | Data Migration Lead; Integration Lead; Operational Readiness Lead; Core Configuration Specialist [200%]; Deposit Product SME; Finance Reconciliation Lead; Project Manager; Test Analyst [200%]; Test Manager | 256h | 36,640 | 36,640 |
| 102 | 4.3.17 | Execute final rehearsal |  | 3d | 2028-12-27 | 2029-01-02 | 100, 101 | 2028-12-21 | 2028-12-28 | 3d | 2028-12-21 | 2028-12-28 | -1.5d | 0d |  |  |  | Data Migration Lead; Finance Reconciliation Lead; Test Manager; Test Analyst [200%]; Operational Readiness Lead; Core Configuration Specialist [200%]; Deposit Product SME; Integration Lead; Project Manager | 168h | 25,500 | 25,500 |
| 103 | 4.3.18 | Obtain final rehearsal approval |  | 2d | 2029-01-02 | 2029-01-04 | 102 | 2028-12-28 | 2029-01-02 | 2d | 2028-12-28 | 2029-01-02 | -1.5d | 0d |  |  |  | Test Manager; Data Migration Lead; Finance Reconciliation Lead; Core Configuration Specialist [200%]; Deposit Product SME; Integration Lead; Operational Readiness Lead; Project Manager; Test Analyst [200%] | 124h | 17,580 | 17,580 |
| 104 | 4.4 | **Prepare & Execute Go-Live** |  | 30d? | 2029-01-04 | 2029-02-06 |  | 2029-01-02 | 2029-02-06 | 31.5d? | 2029-01-02 | 2029-02-06 | -1.5d | 0d |  |  |  | Customer Communications and Remediation Provision [0.1%] | 348.25h | 2,049,543.75 | 2,049,543.75 |
| 105 | 4.4.1 | Complete business readiness |  | 4d | 2029-01-04 | 2029-01-10 | 103 | 2029-01-02 | 2029-01-08 | 4d | 2029-01-02 | 2029-01-08 | -1.5d | 0d |  |  |  | Core Banking Product Owner [25%]; Operational Readiness Lead [50%]; Project Manager [50%] | 24h | 3,440 | 3,440 |
| 106 | 4.4.2 | Complete finance readiness |  | 4d | 2029-01-04 | 2029-01-10 | 103 | 2029-01-02 | 2029-01-08 | 4d | 2029-01-02 | 2029-01-08 | -1.5d | 0d |  |  |  | Finance Reconciliation Lead [50%]; Project Manager [25%] | 16h | 2,480 | 2,480 |
| 107 | 4.4.3 | Complete risk readiness |  | 4d | 2029-01-04 | 2029-01-10 | 103 | 2029-01-02 | 2029-01-08 | 4d | 2029-01-02 | 2029-01-08 | -1.5d | 0d |  |  |  | Project Manager [25%]; Legal & Customer Treatment Lead [25%]; Finance Reconciliation Lead [25%] | 16h | 2,640 | 2,640 |
| 108 | 4.4.4 | Complete operational readiness |  | 4d | 2029-01-04 | 2029-01-10 | 103 | 2029-01-02 | 2029-01-08 | 4d | 2029-01-02 | 2029-01-08 | -1.5d | 0d |  |  |  | Operational Readiness Lead [50%]; Project Manager [25%]; Test Manager [25%] | 24h | 3,320 | 3,320 |
| 109 | 4.4.5 | Obtain go-live approval |  | 2d | 2029-01-10 | 2029-01-12 | 106, 107, 108, 105 | 2029-01-08 | 2029-01-10 | 2d | 2029-01-08 | 2029-01-10 | -1.5d | 0d |  |  |  | Project Manager [50%]; Core Banking Product Owner [25%]; Finance Reconciliation Lead [25%]; Operational Readiness Lead [25%]; Data Migration Lead [25%] | 16h | 2,420 | 2,420 |
| 110 | 4.4.6 | Schedule Contingency Buffer – Go-Live Readiness |  | 3d | 2029-01-12 | 2029-01-17 | 109 | 2029-01-11 | 2029-01-15 | 3d | 2029-01-11 | 2029-01-15 | -1.5d | 0d |  |  |  |  |  |  |  |
| 111 | 4.4.7 | M5 – Final rehearsal, customer treatment and go-live readiness approved | milestone | 0d | 2029-01-17 | 2029-01-17 | 110 | 2029-01-15 | 2029-01-15 | 0d | 2029-01-15 | 2029-01-15 | -1.5d | 0d |  | 2029-01-15 |  |  |  |  |  |
| 112 | 4.4.8 | Cutover go/no-go confirmation |  | 2h | 2029-01-27 | 2029-01-27 | 111 | 2029-01-27 | 2029-01-27 | 2h | 2029-01-27 | 2029-01-27 | 0d |  | start no earlier than 2029-01-27 |  | P3 Cutover 24-7 | Project Manager; Core Banking Product Owner; Data Migration Lead; Finance Reconciliation Lead; Operational Readiness Lead | 8h | 1,210 | 1,210 |
| 113 | 4.4.9 | Data freeze and legacy service shutdown |  | 2h | 2029-01-27 | 2029-01-27 | 112 | 2029-01-27 | 2029-01-27 | 2h | 2029-01-27 | 2029-01-27 | 0d |  |  |  | P3 Cutover 24-7 | Data Migration Lead; Integration Lead; Core Configuration Specialist | 6h | 950 | 950 |
| 114 | 4.4.10 | Execute account migration |  | 6h | 2029-01-27 | 2029-01-27 | 113 | 2029-01-27 | 2029-01-27 | 6h | 2029-01-27 | 2029-01-27 | 0d |  |  |  | P3 Cutover 24-7 | Data Migration Lead [200%]; Core Configuration Specialist; Integration Lead; Test Analyst | 30h | 4,440 | 4,440 |
| 115 | 4.4.11 | Validate control totals and reconciliation |  | 3h | 2029-01-27 | 2029-01-27 | 114 | 2029-01-27 | 2029-01-27 | 3h | 2029-01-27 | 2029-01-27 | 0d |  |  |  | P3 Cutover 24-7 | Finance Reconciliation Lead; Data Migration Lead; Test Analyst [200%] | 12h | 1,590 | 1,590 |
| 116 | 4.4.12 | Rollback decision point | milestone | 0d | 2029-01-27 | 2029-01-27 | 115 | 2029-01-27 | 2029-01-27 | 0d | 2029-01-27 | 2029-01-27 | 0d |  |  |  | P3 Cutover 24-7 | Project Manager; Data Migration Lead; Finance Reconciliation Lead |  |  |  |
| 117 | 4.4.13 | Rollback execution window (contingency reserve) |  | 2h | 2029-01-27 | 2029-01-27 | 116 | 2029-01-27 | 2029-01-27 | 2h | 2029-01-27 | 2029-01-27 | 0d |  |  |  | P3 Cutover 24-7 | Data Migration Lead; Core Configuration Specialist [200%]; Integration Lead |  |  |  |
| 118 | 4.4.14 | Execute customer communications |  | 3h | 2029-01-27 | 2029-01-27 | 114SS | 2029-01-27 | 2029-01-27 | 3h | 2029-01-27 | 2029-01-27 | 1d |  |  |  | P3 Cutover 24-7 | Legal & Customer Treatment Lead [75%]; Operational Readiness Lead | 5.25h | 798.75 | 798.75 |
| 119 | 4.4.15 | Restore services and confirm availability |  | 1h | 2029-01-27 | 2029-01-28 | 118, 117 | 2029-01-27 | 2029-01-28 | 1h | 2029-01-27 | 2029-01-28 | 0d |  |  |  | P3 Cutover 24-7 | Integration Lead; Core Configuration Specialist; Operational Readiness Lead | 3h | 455 | 455 |
| 120 | 4.4.16 | Post-cutover service verification |  | 12h | 2029-01-28 | 2029-01-28 | 119 | 2029-01-28 | 2029-01-28 | 12h | 2029-01-28 | 2029-01-28 | 0d |  |  |  | P3 Cutover 24-7 | Test Manager; Test Analyst [200%]; Operational Readiness Lead; Project Manager | 48h | 6,000 | 6,000 |
| 121 | 4.4.17 | M6 – Enterprise cutover and account migration executed | milestone | 0d? | 2029-01-28 | 2029-01-28 | 120 | 2029-01-28 | 2029-01-28 | 0d? | 2029-01-28 | 2029-01-28 | 0d |  |  | 2029-01-28 | P3 Cutover 24-7 |  |  |  |  |
| 122 | 4.4.18 | Monitor balances and transactions |  | 10d? | 2029-01-28 | 2029-02-06 | 121 | 2029-01-28 | 2029-02-06 | 10d? | 2029-01-28 | 2029-02-06 | 10d |  |  |  |  | Finance Reconciliation Lead [50%]; Data Migration Lead [25%]; Test Analyst [25%] | 80h | 11,500 | 11,500 |
| 123 | 4.4.19 | Monitor incidents and customer harm |  | 10d | 2029-01-28 | 2029-02-06 | 121 | 2029-01-28 | 2029-02-06 | 10d | 2029-01-28 | 2029-02-06 | 10d |  |  |  |  | Operational Readiness Lead [50%]; Test Manager [25%]; Project Manager [25%] | 60h | 8,300 | 8,300 |

| ID | WBS | Task | Type | Duration | Start | Finish | Predecessors | Baseline start | Baseline finish | Baseline duration | Baseline 1 start | Baseline 1 finish | Total slack | Free slack | Deadline | Resources | Work | Cost | Baseline cost |
| --- | --- | --- | --- | --- | --- | --- | --- | --- | --- | --- | --- | --- | --- | --- | --- | --- | --- | --- | --- |
| 124 | 5 | **Stabilisation, Acceptance & Legacy Exit** |  | 66d? | 2029-01-28 | 2029-04-30 |  | 2029-01-28 | 2029-04-30 | 66d? | 2029-01-28 | 2029-04-30 | 0d |  |  |  | 6238h | 4,884,440 | 4,884,440 |
| 125 | 5.1 | **Hypercare & Exception Resolution** |  | 20d | 2029-01-28 | 2029-02-20 |  | 2029-01-28 | 2029-02-20 | 20d | 2029-01-28 | 2029-02-20 | 0d |  |  | Customer Communications and Remediation Provision [0.1%] | 2920h | 1,413,800 | 1,413,800 |
| 126 | 5.1.1 | Monitor post-migration performance |  | 20d | 2029-01-28 | 2029-02-20 | 121 | 2029-01-28 | 2029-02-20 | 20d | 2029-01-28 | 2029-02-20 | 0d |  |  | Operational Readiness Lead; Data Migration Lead [50%]; Project Manager; Finance Reconciliation Lead; Deposit Product SME; Core Banking Product Owner [50%]; Test Analyst; Legal & Customer Treatment Lead [25%] | 720h | 102,400 | 102,400 |
| 127 | 5.1.2 | Resolve migration defects |  | 20d | 2029-01-28 | 2029-02-20 | 121 | 2029-01-28 | 2029-02-20 | 20d | 2029-01-28 | 2029-02-20 | 0d |  |  | Data Migration Lead [50%]; Project Manager; Operational Readiness Lead; Finance Reconciliation Lead; Deposit Product SME; Core Banking Product Owner [50%]; Test Analyst; Legal & Customer Treatment Lead [25%] | 840h | 119,400 | 119,400 |
| 128 | 5.1.3 | Resolve reconciliation exceptions |  | 20d | 2029-01-28 | 2029-02-20 | 121 | 2029-01-28 | 2029-02-20 | 20d | 2029-01-28 | 2029-02-20 | 0d |  |  | Finance Reconciliation Lead; Data Migration Lead [50%]; Project Manager; Operational Readiness Lead; Deposit Product SME; Core Banking Product Owner [50%]; Test Analyst; Legal & Customer Treatment Lead [25%] | 720h | 100,800 | 100,800 |
| 129 | 5.1.4 | Monitor customer impacts |  | 20d | 2029-01-28 | 2029-02-20 | 121 | 2029-01-28 | 2029-02-20 | 20d | 2029-01-28 | 2029-02-20 | 5d | 0d |  | Operational Readiness Lead; Deposit Product SME; Project Manager; Finance Reconciliation Lead; Data Migration Lead [50%]; Core Banking Product Owner [50%]; Test Analyst; Legal & Customer Treatment Lead [25%] | 640h | 91,200 | 91,200 |
| 130 | 5.2 | **Acceptance** |  | 5d | 2029-02-20 | 2029-02-27 |  | 2029-02-20 | 2029-02-27 | 5d | 2029-02-20 | 2029-02-27 | 0d |  |  | Customer Communications and Remediation Provision [0.1%] | 550h | 577,800 | 577,800 |
| 131 | 5.2.1 | Obtain Product acceptance |  | 5d | 2029-02-20 | 2029-02-27 | 126, 127, 122, 123 | 2029-02-20 | 2029-02-27 | 5d | 2029-02-20 | 2029-02-27 | 0d |  |  | Core Banking Product Owner [50%]; Project Manager; Deposit Product SME; Operational Readiness Lead; Finance Reconciliation Lead; Data Migration Lead [50%]; Test Analyst; Legal & Customer Treatment Lead [25%] | 180h | 25,500 | 25,500 |
| 132 | 5.2.2 | Obtain Finance acceptance |  | 5d | 2029-02-20 | 2029-02-27 | 128 | 2029-02-20 | 2029-02-27 | 5d | 2029-02-20 | 2029-02-27 | 0d |  |  | Finance Reconciliation Lead; Project Manager; Operational Readiness Lead; Deposit Product SME; Data Migration Lead [50%]; Core Banking Product Owner [50%]; Test Analyst; Legal & Customer Treatment Lead [25%] | 190h | 26,750 | 26,750 |
| 133 | 5.2.3 | Obtain Operational acceptance |  | 5d | 2029-02-20 | 2029-02-27 | 126, 129 | 2029-02-20 | 2029-02-27 | 5d | 2029-02-20 | 2029-02-27 | 5d | 0d |  | Operational Readiness Lead; Project Manager; Core Banking Product Owner [50%]; Finance Reconciliation Lead; Deposit Product SME; Data Migration Lead [50%]; Test Analyst; Legal & Customer Treatment Lead [25%] | 180h | 25,550 | 25,550 |
| 134 | 5.3 | **Operational Handover** |  | 17d | 2029-02-27 | 2029-03-22 |  | 2029-02-27 | 2029-03-22 | 17d | 2029-02-27 | 2029-03-22 | 5d |  |  |  | 622h | 88,540 | 88,540 |
| 135 | 5.3.1 | Transfer residual items |  | 7d | 2029-02-27 | 2029-03-08 | 131, 132, 133 | 2029-02-27 | 2029-03-08 | 7d | 2029-02-27 | 2029-03-08 | 5d | 0d |  | Operational Readiness Lead; Project Manager; Data Migration Lead [50%]; Finance Reconciliation Lead; Deposit Product SME; Core Banking Product Owner [50%]; Test Analyst; Legal & Customer Treatment Lead [25%] | 252h | 35,840 | 35,840 |
| 136 | 5.3.2 | Transfer service ownership |  | 5d | 2029-03-08 | 2029-03-15 | 135 | 2029-03-08 | 2029-03-15 | 5d | 2029-03-08 | 2029-03-15 | 5d | 0d |  | Operational Readiness Lead; Project Manager; Core Banking Product Owner [50%]; Finance Reconciliation Lead; Deposit Product SME; Data Migration Lead [50%]; Test Analyst; Legal & Customer Treatment Lead [25%] | 180h | 25,550 | 25,550 |
| 137 | 5.3.3 | Complete knowledge handover |  | 5d | 2029-03-15 | 2029-03-22 | 136 | 2029-03-15 | 2029-03-22 | 5d | 2029-03-15 | 2029-03-22 | 5d | 0d |  | Operational Readiness Lead; Project Manager; Finance Reconciliation Lead; Deposit Product SME; Data Migration Lead [50%]; Core Banking Product Owner [50%]; Test Analyst; Legal & Customer Treatment Lead [25%] | 190h | 27,150 | 27,150 |
| 138 | 5.4 | **Legacy Exit** |  | 27d | 2029-02-27 | 2029-04-09 |  | 2029-02-27 | 2029-04-09 | 27d | 2029-02-27 | 2029-04-09 | 0d |  |  | Legacy Archive and Decommissioning [0.1%] | 946h | 2,634,510 | 2,634,510 |
| 139 | 5.4.1 | Confirm migrated legacy components |  | 5d | 2029-02-27 | 2029-03-06 | 131, 132 | 2029-02-27 | 2029-03-06 | 5d | 2029-02-27 | 2029-03-06 | 0d |  |  | Data Migration Lead [50%]; Operational Readiness Lead; Finance Reconciliation Lead; Project Manager; Deposit Product SME; Core Banking Product Owner [50%]; Test Analyst; Legal & Customer Treatment Lead [25%] | 150h | 21,150 | 21,150 |
| 140 | 5.4.2 | Complete legacy shutdown activities |  | 12d | 2029-03-06 | 2029-03-22 | 139 | 2029-03-06 | 2029-03-22 | 12d | 2029-03-06 | 2029-03-22 | 0d |  |  | Data Migration Lead [50%]; Operational Readiness Lead; Project Manager; Finance Reconciliation Lead; Deposit Product SME; Core Banking Product Owner [50%]; Test Analyst; Legal & Customer Treatment Lead [25%] | 456h | 65,160 | 65,160 |
| 141 | 5.4.3 | Validate archive access |  | 5d | 2029-03-22 | 2029-03-29 | 140 | 2029-03-22 | 2029-03-29 | 5d | 2029-03-22 | 2029-03-29 | 0d |  |  | Data Migration Lead [50%]; Operational Readiness Lead; Core Banking Product Owner [50%]; Project Manager; Finance Reconciliation Lead; Deposit Product SME; Test Analyst; Legal & Customer Treatment Lead [25%] | 170h | 24,000 | 24,000 |
| 142 | 5.4.4 | Obtain legacy shutdown approval |  | 5d | 2029-03-29 | 2029-04-09 | 141 | 2029-03-29 | 2029-04-09 | 5d | 2029-03-29 | 2029-04-09 | 0d |  |  | Operational Readiness Lead; Project Manager; Core Banking Product Owner [50%]; Finance Reconciliation Lead; Deposit Product SME; Data Migration Lead [50%]; Test Analyst; Legal & Customer Treatment Lead [25%] | 170h | 24,200 | 24,200 |
| 143 | 5.5 | **Commercial & Project Closure** |  | 41d? | 2029-02-27 | 2029-04-30 |  | 2029-02-27 | 2029-04-30 | 41d? | 2029-02-27 | 2029-04-30 | 0d |  |  |  | 1200h | 169,790 | 169,790 |
| 144 | 5.5.1 | Finalise contracts |  | 7d | 2029-02-27 | 2029-03-08 | 132, 131, 133 | 2029-02-27 | 2029-03-08 | 7d | 2029-02-27 | 2029-03-08 | 20d |  |  | Project Manager; Operational Readiness Lead; Finance Reconciliation Lead; Deposit Product SME; Data Migration Lead [50%]; Core Banking Product Owner [50%]; Test Analyst; Legal & Customer Treatment Lead [25%] | 294h | 41,790 | 41,790 |
| 145 | 5.5.2 | Finalise project finances |  | 7d? | 2029-02-27 | 2029-03-08 | 132 | 2029-02-27 | 2029-03-08 | 7d? | 2029-02-27 | 2029-03-08 | 20d |  |  | Project Manager; Finance Reconciliation Lead; Operational Readiness Lead; Deposit Product SME; Data Migration Lead [50%]; Core Banking Product Owner [50%]; Test Analyst; Legal & Customer Treatment Lead [25%] | 266h | 37,450 | 37,450 |
| 146 | 5.5.3 | Document lessons learned |  | 5d | 2029-03-22 | 2029-03-29 | 137 | 2029-03-22 | 2029-03-29 | 5d | 2029-03-22 | 2029-03-29 | 5d |  |  | Project Manager; Operational Readiness Lead; Finance Reconciliation Lead; Deposit Product SME; Data Migration Lead [50%]; Core Banking Product Owner [50%]; Test Analyst; Legal & Customer Treatment Lead [25%] | 210h | 29,850 | 29,850 |
| 147 | 5.5.4 | Complete benefits handover |  | 5d | 2029-03-22 | 2029-03-29 | 137 | 2029-03-22 | 2029-03-29 | 5d | 2029-03-22 | 2029-03-29 | 5d |  |  | Project Manager; Core Banking Product Owner [50%]; Operational Readiness Lead; Finance Reconciliation Lead; Deposit Product SME; Data Migration Lead [50%]; Test Analyst; Legal & Customer Treatment Lead [25%] | 170h | 24,200 | 24,200 |
| 148 | 5.5.5 | Prepare project closure report |  | 5d | 2029-04-09 | 2029-04-16 | 142, 144, 146, 147, 145 | 2029-04-09 | 2029-04-16 | 5d | 2029-04-09 | 2029-04-16 | 0d |  |  | Project Manager; Finance Reconciliation Lead; Operational Readiness Lead; Deposit Product SME; Data Migration Lead [50%]; Core Banking Product Owner [50%]; Test Analyst; Legal & Customer Treatment Lead [25%] | 180h | 25,200 | 25,200 |
| 149 | 5.5.6 | Obtain Sponsor approval for closure |  | 2d | 2029-04-16 | 2029-04-18 | 148 | 2029-04-16 | 2029-04-18 | 2d | 2029-04-16 | 2029-04-18 | 0d |  |  | Project Manager; Core Banking Product Owner [50%]; Operational Readiness Lead; Finance Reconciliation Lead; Deposit Product SME; Data Migration Lead [50%]; Test Analyst; Legal & Customer Treatment Lead [25%] | 80h | 11,300 | 11,300 |
| 150 | 5.5.7 | Schedule Contingency Buffer – Closure |  | 7d | 2029-04-18 | 2029-04-30 | 149 | 2029-04-18 | 2029-04-30 | 7d | 2029-04-18 | 2029-04-30 | 0d |  |  |  |  |  |  |
| 151 | 5.5.8 | M7 – Hypercare exit, legacy shutdown approval and project closure | milestone | 0d | 2029-04-30 | 2029-04-30 | 150 | 2029-04-30 | 2029-04-30 | 0d | 2029-04-30 | 2029-04-30 | 0d |  | 2029-04-30 |  |  |  |  |

Notes:
- 151: P3 M7 is an upstream dependency for P12 legacy shutdown and operational transition activities.

| ID | WBS | Task | Type | Duration | Start | Finish | Complete | Remaining | Baseline start | Baseline finish | Baseline duration | Baseline 1 start | Baseline 1 finish | Total slack | Constraint | Resources | Work | Actual work | Cost | Baseline cost | Actual cost |
| --- | --- | --- | --- | --- | --- | --- | --- | --- | --- | --- | --- | --- | --- | --- | --- | --- | --- | --- | --- | --- | --- |
| 152 | 6 | **External Dependencies** |  | 151d? | 2028-04-30 A | 2028-11-30 | 99% | 0d? | 2028-04-30 | 2028-11-30 | 151d? | 2028-04-30 | 2028-11-30 | 0d |  |  |  |  |  |  |  |
| 153 | 6.1 | EXT-1: P2 Golden Record Integrated |  | 20d? | 2028-04-30 A | 2028-05-26 A | 100% |  | 2028-04-30 | 2028-04-30 | 0d? | 2028-04-30 | 2028-04-30 |  | start no earlier than 2028-04-30 |  |  |  |  |  |  |
| 154 | 6.2 | EXT-2: P5 Reconciliation Rules Aligned | milestone | 0d? | 2028-09-30 | 2028-09-30 |  |  | 2028-09-30 | 2028-09-30 | 0d? | 2028-09-30 | 2028-09-30 | 42d | start no earlier than 2028-09-30 |  |  |  |  |  |  |
| 155 | 6.3 | EXT-3: P11 Cutover Factory Ready | milestone | 0d? | 2028-11-30 | 2028-11-30 |  |  | 2028-11-30 | 2028-11-30 | 0d? | 2028-11-30 | 2028-11-30 | 0d | start no earlier than 2028-11-30 |  |  |  |  |  |  |
| 156 | 7 | **Project Management & Reserves** |  | 521d? | 2027-04-01 A | 2029-04-12 | 61% | 203.19d? | 2027-04-01 | 2029-04-12 | 521d? | 2027-04-01 | 2029-04-12 | 11.5d |  |  | 4168h | 2542.48h | 5,646,040 | 5,646,040 | 394,084.4 |
| 157 | 7.1 | Project Contingency Allowance | milestone | 0d? | 2029-01-15 | 2029-01-15 |  |  | 2029-01-15 | 2029-01-15 | 0d? | 2027-04-01 | 2027-04-01 | 79.5d | start no earlier than 2029-01-15 | Project Contingency Allowance |  |  | 5,000,000 | 5,000,000 |  |
| 158 | 7.2 | Project Management & Controls (Level of Effort) |  | 521d | 2027-04-01 A | 2029-04-12 | 61% | 203.19d | 2027-04-01 | 2029-04-12 | 521d | 2027-04-01 | 2029-04-12 | 11.5d |  | Project Manager | 4168h | 2542.48h | 646,040 | 646,040 | 394,084.4 |

Notes:
- 153: EXT-1: Assumed delivery date for P2 Golden Record integration (Group 4, Wed 12-14). / Confirmed via Cross Project Coordination Forum. Delay beyond this date directly / impacts P3 conversion testing and the first full migration rehearsal.
- 154: EXT-2: Assumed alignment of P5 payment settlement and reconciliation rules by 30 September 2028 (Project 5 - Payments & Cards Modernisation, Group 6, Wed 12-14 workshop). Basis: Derived from the P5 Project Brief milestone "System integration, peak-load and failover testing completed - 31 July 2028" and the shared 28 January 2029 enterprise cutover date. P5 and P3 cut over in the same window and must reconcile to a common control total. Impact on P3: Feeds financial reconciliation control design and the rehearsal reconciliation runs. Total slack is 43 days. Misalignment rather than delay is the larger risk: inconsistent reconciliation rules would surface as unexplained variances during the first full migration rehearsal in November 2028. Control: Confirmed through the Cross Project Coordination Forum. Joint reconciliation walkthrough with P5 required before rehearsal 1. Escalate to the Program Director if rules are not agreed by 30 September 2028.
- 155: EXT-3: Assumed readiness of the P11 integrated cutover factory, command centre and / dress rehearsal environment by 30 November 2028 (Project 11 - Data Migration, / Testing & Cutover Factory, Group 7, Wed 12-14 workshop). / Basis: P11 Project Brief milestone "First full dress rehearsal completed and / recovery plan approved - 30 November 2028". / Impact on P3: CRITICAL. Total slack on this dependency is 1 day. Any slippage by / P11 propagates directly to the P3 final rehearsal (15 January 2029) and the / enterprise cutover (28 January 2029), neither of which can move - the cutover / window is a fixed approved outage. This is the highest-exposure external / dependency in the P3 baseline. / Control: Weekly confirmation with Group 7 through the Cross Project Coordination / Forum from Q3 2028. Any P11 forecast delay must be escalated to the Program / Director within the same simulation cycle per PMP s3.6. Contingency options if / P11 slips: compress the P3 defect resolution window between rehearsal 1 and the / final rehearsal, or raise a Change Request for a staged migration wave.
- 157: AUD $5,000,000 approved Project Contingency Allowance. This amount is held separately from planned delivery costs and is available only for approved risk responses or unforeseen delivery costs.Management contingency of AUD $5,000,000 per Project Brief 3. Held outside the logic network as a budget reserve; not a schedule activity. Release requires Change Control Board approval per PMP s3.8.
